# Part2

How a schedule from MS Project changed from version to version. A marks actual dates.

## Version 1 (data date 2019-08-30, saved 2019-06-25, file Part3B.mpp)

| ID | WBS | Task | Duration | Start | Finish | Predecessors | Complete | Total float |
| --- | --- | --- | --- | --- | --- | --- | --- | --- |
| 1 | 1 | **Nightingale Project A** | 251d | 2019-07-01 A | 2020-06-24 |  | 28% | 0d |
| 2 |  | Architectural decisions | 10d | 2019-07-01 A | 2019-07-15 A |  | 100% |  |
| 3 |  | Internal specifications | 20d | 2019-08-09 A | 2019-09-06 | 2 | 85% | 5d |
| 4 |  | External specifications | 18d | 2019-08-09 A | 2019-09-04 | 2 | 85% | 7d |
| 5 |  | Feature specifications | 18d | 2019-07-16 A | 2019-08-08 A | 2 | 100% |  |
| 6 |  | Voice recognition | 15d | 2019-09-09 | 2019-09-27 | 3, 4 |  | 5d |
| 7 |  | Case | 4d | 2019-09-09 | 2019-09-12 | 3, 4 |  | 16d |
| 8 |  | Screen | 2d | 2019-09-16 | 2019-09-17 | 3, 4 |  | 13d |
| 9 |  | Speaker output jacks | 2d | 2019-09-17 | 2019-09-18 | 3, 4 |  | 12d |
| 10 |  | Tape mechanism | 2d | 2019-09-23 | 2019-09-24 | 3, 4 |  | 8d |
| 11 |  | Database | 40d | 2019-08-09 A | 2019-10-04 | 5 | 30% | 0d |
| 12 |  | Microphone/soundcard | 5d | 2019-08-09 A | 2019-08-15 A | 5 | 100% |  |
| 13 |  | Pager | 7d | 2019-08-16 A | 2019-08-26 A | 5 | 100% |  |
| 14 |  | Barcode reader | 6d | 2019-08-23 A | 2019-08-30 A | 5 | 100% |  |
| 15 |  | Alarm clock | 11d | 2019-08-16 A | 2019-08-30 A | 5 | 100% |  |
| 16 |  | Computer I/O | 8d | 2019-08-09 A | 2019-08-20 A | 5 | 100% |  |
| 17 |  | Review design | 10d | 2019-10-07 | 2019-10-18 | 6, 7, 8, 9, 10, 11, 12, 13, 14, 15, 16 |  | 0d |
| 18 |  | Price components | 5d | 2019-10-07 | 2019-10-11 | 6, 7, 8, 9, 10, 11, 12, 13, 14, 15, 16 |  | 5d |
| 19 |  | Integration | 15d | 2019-10-21 | 2019-11-08 | 17, 18 |  | 0d |
| 20 |  | Document design | 35d | 2019-10-21 | 2019-12-09 | 17 |  | 30d |
| 21 |  | Procure prototype components | 20d | 2019-11-11 | 2019-12-09 | 19 |  | 0d |
| 22 |  | Assemble prototypes | 10d | 2019-12-10 | 2019-12-23 | 21 |  | 0d |
| 23 |  | Lab test prototypes | 20d | 2019-12-24 | 2020-01-23 | 22 |  | 0d |
| 24 |  | Field test prototypes | 20d | 2020-01-24 | 2020-02-20 | 20, 23 |  | 0d |
| 25 |  | Adjust design | 20d | 2020-02-21 | 2020-03-19 | 24 |  | 0d |
| 26 |  | Order stock parts | 15d | 2020-03-20 | 2020-04-09 | 25 |  | 0d |
| 27 |  | Order custom parts | 2d | 2020-03-20 | 2020-03-23 | 25 |  | 8d |
| 28 |  | Assemble first production unit | 10d | 2020-04-22 | 2020-05-05 | 26FS+8d, 27FS+13d |  | 0d |
| 29 |  | Test unit | 10d | 2020-05-06 | 2020-05-19 | 28 |  | 0d |
| 30 |  | Produce 30 units | 15d | 2020-05-20 | 2020-06-10 | 29 |  | 0d |
| 31 |  | Train sales representatives | 10d | 2020-06-11 | 2020-06-24 | 30 |  | 0d |

## Version 2 (saved 2019-06-25, file Part1.mpp)

Last finish 2020-06-24 → 2020-06-19 (-5d). Complete tasks 7 → 0.

Changed:

| ID | Task | Start | Finish | Duration | Complete | Total float | Other |
| --- | --- | --- | --- | --- | --- | --- | --- |
| 1 | **Nightingale Project A** | 2019-07-01 A → 2019-07-01 | 2020-06-24 → 2020-06-19 (-5d) | 251d → 248d | 28% → 0% |  | baseline start 2019-07-01 → none; baseline finish 2020-06-19 → none |
| 2 | Architectural decisions | 2019-07-01 A → 2019-07-01 | 2019-07-15 A → 2019-07-15 |  | 100% → 0% | none → 0d | resources Design → none; baseline start 2019-07-01 → none; baseline finish 2019-07-15 → none |
| 3 | Internal specifications | 2019-08-09 A → 2019-07-16 (-24d) | 2019-09-06 → 2019-08-12 (-25d) |  | 85% → 0% | 5d → 20d | resources Design → none; baseline start 2019-08-06 → none; baseline finish 2019-09-03 → none |
| 4 | External specifications | 2019-08-09 A → 2019-07-16 (-24d) | 2019-09-04 → 2019-08-08 (-27d) |  | 85% → 0% | 7d → 22d | resources Design → none; baseline start 2019-08-06 → none; baseline finish 2019-08-29 → none |
| 5 | Feature specifications | 2019-07-16 A → 2019-07-16 | 2019-08-08 A → 2019-08-05 (-3d) | 18d → 15d | 100% → 0% | none → 0d | resources Design [200%] → none; baseline start 2019-07-16 → none; baseline finish 2019-08-05 → none |
| 6 | Voice recognition | 2019-09-09 → 2019-08-13 (-27d) | 2019-09-27 → 2019-09-03 (-24d) |  |  | 5d → 20d | resources Development [200%] → none; baseline start 2019-09-04 → none; baseline finish 2019-09-24 → none |
| 7 | Case | 2019-09-09 → 2019-08-13 (-27d) | 2019-09-12 → 2019-08-16 (-27d) |  |  | 16d → 31d | resources Development → none; baseline start 2019-09-04 → none; baseline finish 2019-09-09 → none |
| 8 | Screen | 2019-09-16 → 2019-08-13 (-34d) | 2019-09-17 → 2019-08-14 (-34d) |  |  | 13d → 33d | resources Development → none; baseline start 2019-09-10 → none; baseline finish 2019-09-11 → none |
| 9 | Speaker output jacks | 2019-09-17 → 2019-08-13 (-35d) | 2019-09-18 → 2019-08-14 (-35d) |  |  | 12d → 33d | resources Development → none; baseline start 2019-09-12 → none; baseline finish 2019-09-13 → none |
| 10 | Tape mechanism | 2019-09-23 → 2019-08-13 (-41d) | 2019-09-24 → 2019-08-14 (-41d) |  |  | 8d → 33d | resources Development → none; baseline start 2019-09-16 → none; baseline finish 2019-09-17 → none |
| 11 | Database | 2019-08-09 A → 2019-08-06 (-3d) | 2019-10-04 → 2019-10-01 (-3d) |  | 30% → 0% |  | resources Development → none; baseline start 2019-08-06 → none; baseline finish 2019-10-01 → none |
| 12 | Microphone/soundcard | 2019-08-09 A → 2019-08-06 (-3d) | 2019-08-15 A → 2019-08-12 (-3d) |  | 100% → 0% | none → 35d | resources Development → none; baseline start 2019-08-06 → none; baseline finish 2019-08-12 → none |
| 13 | Pager | 2019-08-16 A → 2019-08-06 (-10d) | 2019-08-26 A → 2019-08-09 (-17d) | 7d → 4d | 100% → 0% | none → 36d | resources Development → none; baseline start 2019-08-06 → none; baseline finish 2019-08-09 → none |
| 14 | Barcode reader | 2019-08-23 A → 2019-08-06 (-17d) | 2019-08-30 A → 2019-08-08 (-22d) | 6d → 3d | 100% → 0% | none → 37d | resources Development → none; baseline start 2019-08-13 → none; baseline finish 2019-08-15 → none |
| 15 | Alarm clock | 2019-08-16 A → 2019-08-06 (-10d) | 2019-08-30 A → 2019-08-09 (-21d) | 11d → 4d | 100% → 0% | none → 36d | resources Development → none; baseline start 2019-08-12 → none; baseline finish 2019-08-15 → none |
| 16 | Computer I/O | 2019-08-09 A → 2019-08-06 (-3d) | 2019-08-20 A → 2019-08-12 (-8d) | 8d → 5d | 100% → 0% | none → 35d | resources Development → none; baseline start 2019-08-06 → none; baseline finish 2019-08-12 → none |
| 17 | Review design | 2019-10-07 → 2019-10-02 (-5d) | 2019-10-18 → 2019-10-15 (-3d) |  |  |  | resources Design [50%] → none; baseline start 2019-10-02 → none; baseline finish 2019-10-15 → none |
| 18 | Price components | 2019-10-07 → 2019-10-02 (-5d) | 2019-10-11 → 2019-10-08 (-3d) |  |  |  | resources Procurement → none; baseline start 2019-10-02 → none; baseline finish 2019-10-08 → none |
| 19 | Integration | 2019-10-21 → 2019-10-16 (-5d) | 2019-11-08 → 2019-11-05 (-3d) |  |  |  | resources Assembly/test → none; baseline start 2019-10-16 → none; baseline finish 2019-11-05 → none |
| 20 | Document design | 2019-10-21 → 2019-10-16 (-5d) | 2019-12-09 → 2019-12-04 (-5d) |  |  |  | resources Design [50%] → none; baseline start 2019-10-16 → none; baseline finish 2019-12-04 → none |
| 21 | Procure prototype components | 2019-11-11 → 2019-11-06 (-5d) | 2019-12-09 → 2019-12-04 (-5d) |  |  |  | resources Procurement → none; baseline start 2019-11-06 → none; baseline finish 2019-12-04 → none |
| 22 | Assemble prototypes | 2019-12-10 → 2019-12-05 (-5d) | 2019-12-23 → 2019-12-18 (-5d) |  |  |  | resources Assembly/test → none; baseline start 2019-12-05 → none; baseline finish 2019-12-18 → none |
| 23 | Lab test prototypes | 2019-12-24 → 2019-12-19 (-5d) | 2020-01-23 → 2020-01-20 (-3d) |  |  |  | resources Assembly/test → none; baseline start 2019-12-19 → none; baseline finish 2020-01-20 → none |
| 24 | Field test prototypes | 2020-01-24 → 2020-01-21 (-3d) | 2020-02-20 → 2020-02-17 (-3d) |  |  |  | resources Assembly/test → none; baseline start 2020-01-21 → none; baseline finish 2020-02-17 → none |
| 25 | Adjust design | 2020-02-21 → 2020-02-18 (-3d) | 2020-03-19 → 2020-03-16 (-3d) |  |  |  | resources Design [50%] → none; baseline start 2020-02-18 → none; baseline finish 2020-03-16 → none |
| 26 | Order stock parts | 2020-03-20 → 2020-03-17 (-3d) | 2020-04-09 → 2020-04-06 (-3d) |  |  |  | resources Procurement [50%] → none; baseline start 2020-03-17 → none; baseline finish 2020-04-06 → none |
| 27 | Order custom parts | 2020-03-20 → 2020-03-17 (-3d) | 2020-03-23 → 2020-03-18 (-5d) |  |  |  | resources Procurement [50%] → none; baseline start 2020-03-17 → none; baseline finish 2020-03-18 → none |
| 28 | Assemble first production unit | 2020-04-22 → 2020-04-17 (-5d) | 2020-05-05 → 2020-04-30 (-5d) |  |  |  | resources Assembly/test → none; baseline start 2020-04-17 → none; baseline finish 2020-04-30 → none |
| 29 | Test unit | 2020-05-06 → 2020-05-01 (-5d) | 2020-05-19 → 2020-05-14 (-5d) |  |  |  | resources Assembly/test → none; baseline start 2020-05-01 → none; baseline finish 2020-05-14 → none |
| 30 | Produce 30 units | 2020-05-20 → 2020-05-15 (-5d) | 2020-06-10 → 2020-06-05 (-5d) |  |  |  | resources Assembly/test [200%] → none; baseline start 2020-05-15 → none; baseline finish 2020-06-05 → none |
| 31 | Train sales representatives | 2020-06-11 → 2020-06-08 (-3d) | 2020-06-24 → 2020-06-19 (-5d) |  |  |  | resources Development → none; baseline start 2020-06-08 → none; baseline finish 2020-06-19 → none |

## Version 3 (saved 2019-06-25, file Part2A.mpp)

Last finish stays 2020-06-19.

Changed:

| ID | Task | Start | Finish | Total float | Other |
| --- | --- | --- | --- | --- | --- |
| 2 | Architectural decisions |  |  |  | resources none → Design |
| 3 | Internal specifications | 2019-07-16 → 2019-08-06 (+21d) | 2019-08-12 → 2019-09-03 (+22d) | 20d → 0d | resources none → Design |
| 4 | External specifications | 2019-07-16 → 2019-08-06 (+21d) | 2019-08-08 → 2019-08-29 (+21d) | 22d → 2d | resources none → Design |
| 5 | Feature specifications |  |  |  | resources none → Design [200%] |
| 6 | Voice recognition | 2019-08-13 → 2019-09-11 (+29d) | 2019-09-03 → 2019-10-01 (+28d) | 20d → 0d | resources none → Development [200%] |
| 7 | Case | 2019-08-13 → 2019-09-26 (+44d) | 2019-08-16 → 2019-10-01 (+46d) | 31d → 0d | resources none → Development |
| 8 | Screen | 2019-08-13 → 2019-09-30 (+48d) | 2019-08-14 → 2019-10-01 (+48d) | 33d → 0d | resources none → Development |
| 9 | Speaker output jacks | 2019-08-13 → 2019-09-30 (+48d) | 2019-08-14 → 2019-10-01 (+48d) | 33d → 0d | resources none → Development |
| 10 | Tape mechanism | 2019-08-13 → 2019-09-30 (+48d) | 2019-08-14 → 2019-10-01 (+48d) | 33d → 0d | resources none → Development |
| 11 | Database |  |  |  | resources none → Development |
| 12 | Microphone/soundcard |  |  |  | resources none → Development |
| 13 | Pager | 2019-08-06 → 2019-08-20 (+14d) | 2019-08-09 → 2019-08-23 (+14d) | 36d → 26d | resources none → Development |
| 14 | Barcode reader | 2019-08-06 → 2019-08-30 (+24d) | 2019-08-08 → 2019-09-04 (+27d) | 37d → 19d | resources none → Development |
| 15 | Alarm clock | 2019-08-06 → 2019-08-26 (+20d) | 2019-08-09 → 2019-08-29 (+20d) | 36d → 22d | resources none → Development |
| 16 | Computer I/O | 2019-08-06 → 2019-08-13 (+7d) | 2019-08-12 → 2019-08-19 (+7d) | 35d → 30d | resources none → Development |
| 17 | Review design |  |  |  | resources none → Design [50%] |
| 18 | Price components |  |  |  | resources none → Procurement |
| 19 | Integration |  |  |  | resources none → Assembly/test |
| 20 | Document design |  |  |  | resources none → Design [50%] |
| 21 | Procure prototype components |  |  |  | resources none → Procurement |
| 22 | Assemble prototypes |  |  |  | resources none → Assembly/test |
| 23 | Lab test prototypes |  |  |  | resources none → Assembly/test |
| 24 | Field test prototypes |  |  |  | resources none → Assembly/test |
| 25 | Adjust design |  |  |  | resources none → Design [50%] |
| 26 | Order stock parts |  |  |  | resources none → Procurement [50%] |
| 27 | Order custom parts |  |  |  | resources none → Procurement [50%] |
| 28 | Assemble first production unit |  |  |  | resources none → Assembly/test |
| 29 | Test unit |  |  |  | resources none → Assembly/test |
| 30 | Produce 30 units |  |  |  | resources none → Assembly/test [200%] |
| 31 | Train sales representatives |  |  |  | resources none → Development |

## Version 4 (saved 2019-06-25, file Part2.mpp)

Last finish stays 2020-06-19.

Changed:

| ID | Task | Start | Finish | Total float |
| --- | --- | --- | --- | --- |
| 3 | Internal specifications | 2019-08-06 → 2019-07-16 (-21d) | 2019-09-03 → 2019-08-12 (-22d) | 0d → 20d |
| 4 | External specifications | 2019-08-06 → 2019-07-16 (-21d) | 2019-08-29 → 2019-08-08 (-21d) | 2d → 22d |
| 6 | Voice recognition | 2019-09-11 → 2019-08-13 (-29d) | 2019-10-01 → 2019-09-03 (-28d) | 0d → 20d |
| 7 | Case | 2019-09-26 → 2019-08-13 (-44d) | 2019-10-01 → 2019-08-16 (-46d) | 0d → 31d |
| 8 | Screen | 2019-09-30 → 2019-08-13 (-48d) | 2019-10-01 → 2019-08-14 (-48d) | 0d → 33d |
| 9 | Speaker output jacks | 2019-09-30 → 2019-08-13 (-48d) | 2019-10-01 → 2019-08-14 (-48d) | 0d → 33d |
| 10 | Tape mechanism | 2019-09-30 → 2019-08-13 (-48d) | 2019-10-01 → 2019-08-14 (-48d) | 0d → 33d |
| 13 | Pager | 2019-08-20 → 2019-08-06 (-14d) | 2019-08-23 → 2019-08-09 (-14d) | 26d → 36d |
| 14 | Barcode reader | 2019-08-30 → 2019-08-06 (-24d) | 2019-09-04 → 2019-08-08 (-27d) | 19d → 37d |
| 15 | Alarm clock | 2019-08-26 → 2019-08-06 (-20d) | 2019-08-29 → 2019-08-09 (-20d) | 22d → 36d |
| 16 | Computer I/O | 2019-08-13 → 2019-08-06 (-7d) | 2019-08-19 → 2019-08-12 (-7d) | 30d → 35d |

## Version 5 (saved 2019-06-25, file Part2B.mpp)

Last finish 2020-06-19 → 2020-07-20 (+31d).

Changed:

| ID | Task | Start | Finish | Duration | Total float |
| --- | --- | --- | --- | --- | --- |
| 1 | **Nightingale Project A** |  | 2020-06-19 → 2020-07-20 (+31d) | 248d → 269d |  |
| 3 | Internal specifications | 2019-07-16 → 2019-08-06 (+21d) | 2019-08-12 → 2019-09-03 (+22d) |  | 20d → 0d |
| 4 | External specifications | 2019-07-16 → 2019-08-06 (+21d) | 2019-08-08 → 2019-08-29 (+21d) |  | 22d → 2d |
| 6 | Voice recognition | 2019-08-13 → 2019-10-02 (+50d) | 2019-09-03 → 2019-10-22 (+49d) |  | 20d → 6d |
| 7 | Case | 2019-08-13 → 2019-10-23 (+71d) | 2019-08-16 → 2019-10-28 (+73d) |  | 31d → 2d |
| 8 | Screen | 2019-08-13 → 2019-10-23 (+71d) | 2019-08-14 → 2019-10-24 (+71d) |  | 33d → 4d |
| 9 | Speaker output jacks | 2019-08-13 → 2019-10-25 (+73d) | 2019-08-14 → 2019-10-28 (+75d) |  | 33d → 2d |
| 10 | Tape mechanism | 2019-08-13 → 2019-10-29 (+77d) | 2019-08-14 → 2019-10-30 (+77d) |  | 33d → 0d |
| 13 | Pager | 2019-08-06 → 2019-08-20 (+14d) | 2019-08-09 → 2019-08-23 (+14d) |  | 36d → 47d |
| 14 | Barcode reader | 2019-08-06 → 2019-08-30 (+24d) | 2019-08-08 → 2019-09-04 (+27d) |  | 37d → 40d |
| 15 | Alarm clock | 2019-08-06 → 2019-08-26 (+20d) | 2019-08-09 → 2019-08-29 (+20d) |  | 36d → 43d |
| 16 | Computer I/O | 2019-08-06 → 2019-08-13 (+7d) | 2019-08-12 → 2019-08-19 (+7d) |  | 35d → 51d |
| 17 | Review design | 2019-10-02 → 2019-10-31 (+29d) | 2019-10-15 → 2019-11-13 (+29d) |  |  |
| 18 | Price components | 2019-10-02 → 2019-10-31 (+29d) | 2019-10-08 → 2019-11-06 (+29d) |  |  |
| 19 | Integration | 2019-10-16 → 2019-11-14 (+29d) | 2019-11-05 → 2019-12-05 (+30d) |  |  |
| 20 | Document design | 2019-10-16 → 2019-11-14 (+29d) | 2019-12-04 → 2020-01-07 (+34d) |  |  |
| 21 | Procure prototype components | 2019-11-06 → 2019-12-06 (+30d) | 2019-12-04 → 2020-01-07 (+34d) |  |  |
| 22 | Assemble prototypes | 2019-12-05 → 2020-01-08 (+34d) | 2019-12-18 → 2020-01-21 (+34d) |  |  |
| 23 | Lab test prototypes | 2019-12-19 → 2020-01-22 (+34d) | 2020-01-20 → 2020-02-18 (+29d) |  |  |
| 24 | Field test prototypes | 2020-01-21 → 2020-02-19 (+29d) | 2020-02-17 → 2020-03-17 (+29d) |  |  |
| 25 | Adjust design | 2020-02-18 → 2020-03-18 (+29d) | 2020-03-16 → 2020-04-14 (+29d) |  |  |
| 26 | Order stock parts | 2020-03-17 → 2020-04-15 (+29d) | 2020-04-06 → 2020-05-05 (+29d) |  |  |
| 27 | Order custom parts | 2020-03-17 → 2020-04-15 (+29d) | 2020-03-18 → 2020-04-16 (+29d) |  |  |
| 28 | Assemble first production unit | 2020-04-17 → 2020-05-18 (+31d) | 2020-04-30 → 2020-06-01 (+32d) |  |  |
| 29 | Test unit | 2020-05-01 → 2020-06-02 (+32d) | 2020-05-14 → 2020-06-15 (+32d) |  |  |
| 30 | Produce 30 units | 2020-05-15 → 2020-06-16 (+32d) | 2020-06-05 → 2020-07-06 (+31d) |  |  |
| 31 | Train sales representatives | 2020-06-08 → 2020-07-07 (+29d) | 2020-06-19 → 2020-07-20 (+31d) |  |  |

## Version 6 (saved 2019-06-26, file Part3A.mpp)

Last finish 2020-07-20 → 2020-06-19 (-31d).

Changed:

| ID | Task | Start | Finish | Duration | Total float | Other |
| --- | --- | --- | --- | --- | --- | --- |
| 1 | **Nightingale Project A** |  | 2020-07-20 → 2020-06-19 (-31d) | 269d → 248d |  | baseline start none → 2019-07-01; baseline finish none → 2020-06-19 |
| 2 | Architectural decisions |  |  |  |  | baseline start none → 2019-07-01; baseline finish none → 2019-07-15 |
| 3 | Internal specifications |  |  |  | 0d → 5d | baseline start none → 2019-08-06; baseline finish none → 2019-09-03 |
| 4 | External specifications |  |  |  | 2d → 7d | baseline start none → 2019-08-06; baseline finish none → 2019-08-29 |
| 5 | Feature specifications |  |  |  | 21d → 0d | baseline start none → 2019-07-16; baseline finish none → 2019-08-05 |
| 6 | Voice recognition | 2019-10-02 → 2019-09-04 (-28d) | 2019-10-22 → 2019-09-24 (-28d) |  | 6d → 5d | baseline start none → 2019-09-04; baseline finish none → 2019-09-24 |
| 7 | Case | 2019-10-23 → 2019-09-04 (-49d) | 2019-10-28 → 2019-09-09 (-49d) |  | 2d → 16d | baseline start none → 2019-09-04; baseline finish none → 2019-09-09 |
| 8 | Screen | 2019-10-23 → 2019-09-10 (-43d) | 2019-10-24 → 2019-09-11 (-43d) |  | 4d → 14d | baseline start none → 2019-09-10; baseline finish none → 2019-09-11 |
| 9 | Speaker output jacks | 2019-10-25 → 2019-09-12 (-43d) | 2019-10-28 → 2019-09-13 (-45d) |  | 2d → 12d | baseline start none → 2019-09-12; baseline finish none → 2019-09-13 |
| 10 | Tape mechanism | 2019-10-29 → 2019-09-16 (-43d) | 2019-10-30 → 2019-09-17 (-43d) |  | 0d → 10d | baseline start none → 2019-09-16; baseline finish none → 2019-09-17 |
| 11 | Database |  |  |  | 21d → 0d | baseline start none → 2019-08-06; baseline finish none → 2019-10-01 |
| 12 | Microphone/soundcard |  |  |  | 56d → 35d | baseline start none → 2019-08-06; baseline finish none → 2019-08-12 |
| 13 | Pager | 2019-08-20 → 2019-08-06 (-14d) | 2019-08-23 → 2019-08-09 (-14d) |  | 47d → 36d | baseline start none → 2019-08-06; baseline finish none → 2019-08-09 |
| 14 | Barcode reader | 2019-08-30 → 2019-08-13 (-17d) | 2019-09-04 → 2019-08-15 (-20d) |  | 40d → 32d | baseline start none → 2019-08-13; baseline finish none → 2019-08-15 |
| 15 | Alarm clock | 2019-08-26 → 2019-08-12 (-14d) | 2019-08-29 → 2019-08-15 (-14d) |  | 43d → 32d | baseline start none → 2019-08-12; baseline finish none → 2019-08-15 |
| 16 | Computer I/O | 2019-08-13 → 2019-08-06 (-7d) | 2019-08-19 → 2019-08-12 (-7d) |  | 51d → 35d | baseline start none → 2019-08-06; baseline finish none → 2019-08-12 |
| 17 | Review design | 2019-10-31 → 2019-10-02 (-29d) | 2019-11-13 → 2019-10-15 (-29d) |  |  | baseline start none → 2019-10-02; baseline finish none → 2019-10-15 |
| 18 | Price components | 2019-10-31 → 2019-10-02 (-29d) | 2019-11-06 → 2019-10-08 (-29d) |  |  | baseline start none → 2019-10-02; baseline finish none → 2019-10-08 |
| 19 | Integration | 2019-11-14 → 2019-10-16 (-29d) | 2019-12-05 → 2019-11-05 (-30d) |  |  | baseline start none → 2019-10-16; baseline finish none → 2019-11-05 |
| 20 | Document design | 2019-11-14 → 2019-10-16 (-29d) | 2020-01-07 → 2019-12-04 (-34d) |  |  | baseline start none → 2019-10-16; baseline finish none → 2019-12-04 |
| 21 | Procure prototype components | 2019-12-06 → 2019-11-06 (-30d) | 2020-01-07 → 2019-12-04 (-34d) |  |  | baseline start none → 2019-11-06; baseline finish none → 2019-12-04 |
| 22 | Assemble prototypes | 2020-01-08 → 2019-12-05 (-34d) | 2020-01-21 → 2019-12-18 (-34d) |  |  | baseline start none → 2019-12-05; baseline finish none → 2019-12-18 |
| 23 | Lab test prototypes | 2020-01-22 → 2019-12-19 (-34d) | 2020-02-18 → 2020-01-20 (-29d) |  |  | baseline start none → 2019-12-19; baseline finish none → 2020-01-20 |
| 24 | Field test prototypes | 2020-02-19 → 2020-01-21 (-29d) | 2020-03-17 → 2020-02-17 (-29d) |  |  | baseline start none → 2020-01-21; baseline finish none → 2020-02-17 |
| 25 | Adjust design | 2020-03-18 → 2020-02-18 (-29d) | 2020-04-14 → 2020-03-16 (-29d) |  |  | baseline start none → 2020-02-18; baseline finish none → 2020-03-16 |
| 26 | Order stock parts | 2020-04-15 → 2020-03-17 (-29d) | 2020-05-05 → 2020-04-06 (-29d) |  |  | baseline start none → 2020-03-17; baseline finish none → 2020-04-06 |
| 27 | Order custom parts | 2020-04-15 → 2020-03-17 (-29d) | 2020-04-16 → 2020-03-18 (-29d) |  |  | baseline start none → 2020-03-17; baseline finish none → 2020-03-18 |
| 28 | Assemble first production unit | 2020-05-18 → 2020-04-17 (-31d) | 2020-06-01 → 2020-04-30 (-32d) |  |  | baseline start none → 2020-04-17; baseline finish none → 2020-04-30 |
| 29 | Test unit | 2020-06-02 → 2020-05-01 (-32d) | 2020-06-15 → 2020-05-14 (-32d) |  |  | baseline start none → 2020-05-01; baseline finish none → 2020-05-14 |
| 30 | Produce 30 units | 2020-06-16 → 2020-05-15 (-32d) | 2020-07-06 → 2020-06-05 (-31d) |  |  | baseline start none → 2020-05-15; baseline finish none → 2020-06-05 |
| 31 | Train sales representatives | 2020-07-07 → 2020-06-08 (-29d) | 2020-07-20 → 2020-06-19 (-31d) |  |  | baseline start none → 2020-06-08; baseline finish none → 2020-06-19 |
